# Made vol

How a schedule from MS Project changed from version to version. A marks actual dates.

## Version 1 (saved 2020-05-17, file Grp4-Madera-Planning-v1.mpp)

Note of the change: Ajout des livrables du OneDrive

| ID | WBS | Task | Duration | Start | Finish | Predecessors | Total float | Constraint |
| --- | --- | --- | --- | --- | --- | --- | --- | --- |
| 1 |  | Début projet | 0d | 2019-12-12 | 2019-12-12 |  |  |  |
| 2 | 2 | **Projet MADERA** | 783d | 2019-12-12 | 2022-12-12 |  | 0d |  |
| 3 | 2.1 | **Reformulation du besoin** | 5d | 2019-12-12 | 2019-12-18 | 1 | 16d |  |
| 4 |  | Recueillir et reformuler le besoin | 6d | 2019-12-12 | 2019-12-14 |  | 15d |  |
| 5 |  | Réaliser la "Fiche projet" | 4d | 2019-12-14 | 2019-12-15 | 4 | 18d |  |
| 6 |  | Réaliser le "Macro-planning" | 4d | 2019-12-14 | 2019-12-18 | 4 | 15d |  |
| 7 |  | Rédaction du livrable | 5d | 2019-12-14 | 2019-12-17 |  | 15.86d |  |
| 8 |  | GO / NO GO : Livrable 0 | 0d | 2020-01-10 | 2020-01-10 | 3 |  |  |
| 9 | 2.3 | **Objectifs et stratégies** | 86d | 2020-01-10 | 2020-05-09 | 8 | 0d |  |
| 10 | 2.3.1 | **Gestion du système documentaire** | 2.43d | 2020-01-10 | 2020-01-14 |  | 0d |  |
| 11 |  | Définir la structure de l'équipe | 5d | 2020-01-10 | 2020-01-11 |  | 0d | must start on 2020-01-10 |
| 12 |  | Définir un mode de stockage des documents | 5d | 2020-01-13 | 2020-01-14 |  | 750d |  |
| 13 |  | Etablir la stratégie de versionning | 5d | 2020-01-10 | 2020-01-13 |  | 750.57d |  |
| 14 |  | Rédiger la configuration | 4.43d | 2020-01-11 | 2020-01-12 |  | 750d |  |
| 15 | 2.3.2 | **Analyse fonctionnelle** | 81d | 2020-01-10 | 2020-05-04 |  | 671.57d |  |
| 16 |  | Rédiger l'analyse fonctionnelle | 15d | 2020-01-10 | 2020-01-15 |  | 749.57d |  |
| 17 |  | Établir le PBS (Breakdown Structure Software) | 9.24d | 2020-01-10 | 2020-01-13 |  | 746d |  |
| 18 |  | Établir le WBS ((Work Breakdown Structure)) | 8d | 2020-03-11 | 2020-03-13 | 17 | 705d | start no earlier than 2020-03-11 |
| 19 |  | Déterminer les parties prenantes | 4d | 2020-03-30 | 2020-03-31 |  | 695.29d | start no earlier than 2020-03-30 |
| 20 |  | Établir le planning prévisionnel | 14d | 2020-04-06 | 2020-04-10 | 18 | 687.57d | start no earlier than 2020-04-06 |
| 21 |  | Définir les risques | 14d | 2020-04-30 | 2020-05-04 |  | 671.43d | start no earlier than 2020-04-30 |
| 22 |  | Choisir les indicateurs | 4d | 2020-04-15 | 2020-04-16 |  | 683.29d | start no earlier than 2020-04-15 |
| 23 |  | Rédaction du livrable | 12d | 2020-05-01 | 2020-05-09 |  | 666d | start no earlier than 2020-05-01 |
| 24 |  | GO / NO GO : Livrable 1 | 0d | 2020-05-29 | 2020-05-29 | 9 |  |  |
| 25 | 2.5 | **Architecture, ergonomie et traitements** | 86d | 2020-05-29 | 2020-09-25 | 24 | 576d |  |
| 26 |  | Définir le contrôle de saisies / données | 11d | 2020-06-07 | 2020-06-13 |  | 651d |  |
| 27 |  | Choisir la méthode de développement | 12d | 2020-05-29 | 2020-06-08 |  | 655d |  |
| 28 | 2.5.3 | **Modéliser la BDD** | 12d | 2020-05-29 | 2020-06-16 |  | 650d |  |
| 29 |  | UML | 30d | 2020-05-29 | 2020-06-07 |  | 656d |  |
| 30 |  | MERISE | 20d | 2020-06-08 | 2020-06-16 |  | 649.57d |  |
| 31 | 2.5.4 | **Réaliser les mockups** | 9.43d | 2020-05-29 | 2020-06-11 |  | 652.57d |  |
| 32 |  | Définir l'ergonomie | 45d | 2020-05-29 | 2020-06-11 |  | 652.57d |  |
| 33 |  | Définir l'interface (IHM) | 45d | 2020-05-29 | 2020-06-11 |  | 652.57d |  |
| 34 | 2.5.5 | **Définir l'environnement de développement** | 8d | 2020-06-07 | 2020-06-17 |  | 648d |  |
| 35 |  | Choisir les langages (Analyse du marché actuel) | 16d | 2020-06-11 | 2020-06-17 |  | 647.57d |  |
| 36 |  | Choix de l'hébergement (Analyse du marché actuel) | 10d | 2020-06-07 | 2020-06-10 |  | 654d |  |
| 37 | 2.5.6 | **Argumenter le choix des outils par critères, coûts et ressources** | 3d | 2020-09-09 | 2020-09-13 |  | 586d |  |
| 38 |  | Etude des outils de développement | 7.57d | 2020-09-09 | 2020-09-11 |  | 587d | start no earlier than 2020-09-09 |
| 39 |  | Etude des outils de BDD | 14d | 2020-09-09 | 2020-09-13 |  | 586d | start no earlier than 2020-09-09 |
| 40 |  | Rédaction du livrable | 15d | 2020-09-21 | 2020-09-25 |  | 576d | start no earlier than 2020-09-21 |
| 41 |  | GO / NO GO : Livrable 2 | 0d | 2020-10-09 | 2020-10-09 |  |  |  |
| 42 | 2.7 | **Prototypage** | 36d | 2020-10-09 | 2020-11-30 | 41 | 190d |  |
| 43 | 2.7.1 | **Établir un budget prévisionnel** | 21d | 2020-10-09 | 2020-11-09 |  | 197.79d |  |
| 44 |  | Investissement | 20d | 2020-10-09 | 2020-10-15 |  | 197.43d |  |
| 45 |  | Charges | 28d | 2020-10-15 | 2020-10-23 | 44 | 197.43d |  |
| 46 |  | Coûts humains | 37.71d | 2020-10-23 | 2020-11-03 | 45 | 197.79d |  |
| 47 |  | Coûts internes/externes | 20d | 2020-11-03 | 2020-11-09 | 46 | 199d |  |
| 48 | 2.7.2 | **Sécurisation du projet** | 9.29d | 2020-10-27 | 2020-11-10 |  | 198.14d |  |
| 49 |  | Plan d'assurance qualité | 10d | 2020-11-07 | 2020-11-10 |  | 196.5d |  |
| 50 |  | Gestion des risques | 20d | 2020-10-27 | 2020-11-04 |  | 202d |  |
| 51 | 2.7.3 | **Développer le prototype** | 31d | 2020-10-09 | 2020-11-23 |  | 189.43d |  |
| 52 | 2.7.3.1 | **Module "conception de devis"** | 26d | 2020-10-09 | 2020-11-15 |  | 189d |  |
| 53 | 2.7.3.1.1 | **IHM** | 23d | 2020-10-11 | 2020-11-12 |  | 190.93d |  |
| 54 |  | Interface des commerciaux | 70d | 2020-10-11 | 2020-11-12 |  | 190.93d |  |
| 55 |  | Interface de connexion | 22d | 2020-10-12 | 2020-10-18 |  | 209d |  |
| 56 | 2.7.3.1.2 | **Traitements** | 26d | 2020-10-09 | 2020-11-15 |  | 189d |  |
| 57 |  | Authentification | 12d | 2020-10-18 | 2020-10-22 |  | 205.93d |  |
| 58 | 2.7.3.1.2.2 | **Projet** | 7.57d | 2020-10-25 | 2020-11-04 |  | 196.43d |  |
| 59 |  | Création | 8d | 2020-10-25 | 2020-10-27 |  | 202d |  |
| 60 |  | Modification | 12d | 2020-10-27 | 2020-10-31 |  | 198.93d |  |
| 61 |  | Suppression | 5d | 2020-10-31 | 2020-11-01 |  | 198d |  |
| 62 |  | Lecture | 10d | 2020-11-01 | 2020-11-04 |  | 196d |  |
| 63 | 2.7.3.1.2.3 | **Devis** | 26d | 2020-10-09 | 2020-11-15 |  | 189d |  |
| 64 |  | Création | 8d | 2020-10-09 | 2020-10-11 |  | 213d |  |
| 65 |  | Modification | 12d | 2020-11-12 | 2020-11-15 |  | 187.93d |  |
| 66 |  | Suppression | 5d | 2020-10-23 | 2020-10-24 |  | 204d |  |
| 67 |  | Lecture | 10d | 2020-10-24 | 2020-10-27 |  | 201d |  |
| 68 |  | Envoi au fournisseur | 10d | 2020-10-18 | 2020-10-21 |  | 206d |  |
| 69 |  | Imprimer | 5d | 2020-10-21 | 2020-10-22 |  | 205.14d |  |
| 70 |  | Fonction de lecture des modules | 10d | 2020-10-22 | 2020-10-25 |  | 202.14d |  |

| ID | WBS | Task | Duration | Start | Finish | Predecessors | Total float | Constraint |
| --- | --- | --- | --- | --- | --- | --- | --- | --- |
| 71 |  | Fonction de lecture des composants | 10d | 2020-11-04 | 2020-11-07 |  | 193.43d |  |
| 72 |  | Fonction de lecture des gammes | 10d | 2020-10-09 | 2020-10-12 |  | 212d |  |
| 73 |  | Mettre en place la base de données | 35d | 2020-10-22 | 2020-11-08 |  | 198.2d |  |
| 74 |  | Scénario de test | 25d | 2020-11-15 | 2020-11-23 | 53, 56 | 189d |  |
| 75 |  | Rédaction du livrable | 25d | 2020-11-23 | 2020-11-30 | 51, 43, 48 | 189.43d |  |
| 76 |  | GO / NO GO : Livrable 3 | 0d | 2021-04-12 | 2021-04-12 | 75 |  |  |
| 77 | 2.9 | **Synthèse** | 30d | 2021-04-12 | 2021-05-23 | 76 | 81.5d |  |
| 78 | 2.9.1 | **Rapport final** | 18.36d | 2021-04-12 | 2021-05-06 |  | 81.64d |  |
| 79 |  | Établir le plan de management du projet | 25d | 2021-04-12 | 2021-04-19 |  | 94.29d |  |
| 80 |  | Justifier les choix technologiques et les stratégies retenues | 15d | 2021-04-12 | 2021-04-16 |  | 95d |  |
| 81 |  | Établir la politique de sécurisation | 15d | 2021-04-12 | 2021-04-16 |  | 95d |  |
| 82 |  | Établir le plan de sauvegarde des données | 13d | 2021-05-02 | 2021-05-06 |  | 81d |  |
| 83 |  | Établir le plan de restauration des données | 15d | 2021-04-18 | 2021-04-23 |  | 90.93d |  |
| 84 |  | Établir une traçabilité des données | 20d | 2021-04-18 | 2021-04-24 |  | 90d |  |
| 85 |  | Rédiger le descriptif des outils pour la maintenance | 20d | 2021-04-21 | 2021-04-26 |  | 88d |  |
| 86 |  | Établir le plan de déploiement | 15d | 2021-04-24 | 2021-04-28 |  | 85.93d |  |
| 87 |  | Établir le plan de gestion de changement | 12.86d | 2021-04-28 | 2021-05-03 |  | 82.86d |  |
| 88 |  | Établir le plan de communication | 15d | 2021-04-26 | 2021-05-01 |  | 84.93d |  |
| 89 |  | Établir le plan de formation des utilisateurs | 20d | 2021-04-24 | 2021-04-30 |  | 85d |  |
| 90 |  | Rédiger le retour d'expérience | 25d | 2021-04-16 | 2021-04-24 |  | 90d |  |
| 91 |  | Préparer la soutenance | 30d | 2021-05-06 | 2021-05-15 | 78 | 86.5d |  |
| 92 |  | Rédaction du livrable | 30d | 2021-05-15 | 2021-05-23 | 78 | 80d |  |
| 93 |  | GO / NO GO FINAL : Livrable 4 | 0d | 2021-06-30 | 2021-06-30 | 77 |  |  |
| 94 | 2.11 | **Développement** | 89d | 2021-06-30 | 2021-11-01 | 93 | 0d |  |
| 95 | 2.11.1 | **Développer l'applicatif** | 42d | 2021-06-30 | 2021-08-26 |  | 29d |  |
| 96 |  | Consolider l'interface des commerciaux | 15.75d | 2021-07-19 | 2021-08-09 |  | 42.25d |  |
| 97 |  | Développer l'interface du BE | 15d | 2021-06-30 | 2021-07-20 |  | 56d |  |
| 98 |  | Développer l'interface d'administration | 16.5d | 2021-08-04 | 2021-08-26 |  | 29d |  |
| 99 |  | GO/ NO GO Réunion de validation du développement | 0d | 2021-08-26 | 2021-08-26 | 95 | 47d |  |
| 100 | 2.11.3 | **Consolider la BDD** | 18d | 2021-08-23 | 2021-09-15 |  | 15d |  |
| 101 |  | Utilisateurs | 4d | 2021-08-23 | 2021-08-30 |  | 27d |  |
| 102 |  | Client | 4d | 2021-08-25 | 2021-09-01 |  | 25d |  |
| 103 |  | Fournisseur | 4d | 2021-08-27 | 2021-09-03 |  | 23d |  |
| 104 |  | Projet | 4d | 2021-08-31 | 2021-09-07 |  | 21d |  |
| 105 |  | Composants | 4d | 2021-09-02 | 2021-09-09 |  | 19d |  |
| 106 |  | Modules | 4d | 2021-09-06 | 2021-09-13 |  | 17d |  |
| 107 |  | Gammes | 4d | 2021-09-08 | 2021-09-15 |  | 15d |  |
| 108 | 2.11.4 | **Réaliser des scénarios de test** | 18d | 2021-09-16 | 2021-10-11 | 95, 100 | 15d |  |
| 109 |  | Réaliser les tests | 7d | 2021-09-16 | 2021-09-24 |  | 15d |  |
| 110 |  | Corriger les bugs relevés | 7d | 2021-09-27 | 2021-10-05 | 109 | 15d |  |
| 111 |  | Rejouer les tests | 4d | 2021-10-06 | 2021-10-11 | 110 | 15d |  |
| 112 | 2.11.5 | **Rédiger la documentation technique** | 33d | 2021-09-10 | 2021-10-26 |  | 4d |  |
| 113 |  | Processus (Algorithme...) | 7d | 2021-10-12 | 2021-10-20 |  | 8d |  |
| 114 |  | Doc de maintenance | 7d | 2021-10-12 | 2021-10-20 |  | 8d |  |
| 115 |  | Mise à jour de la documentation UML | 7d | 2021-09-10 | 2021-10-14 |  | 12d |  |
| 116 |  | Nomenclature | 4d | 2021-10-21 | 2021-10-26 |  | 4d |  |
| 117 |  | Glossaire | 3d | 2021-10-21 | 2021-10-25 |  | 5d |  |
| 118 |  | GO / NO GO Réunion de validation du projet | 0d | 2021-10-11 | 2021-10-11 | 108 | 15d |  |
| 119 | 2.11.7 | **Rédiger les manuels d'utilisation** | 12d | 2021-10-15 | 2021-11-01 |  | 0d |  |
| 120 |  | Introduction à l'application | 2d | 2021-10-27 | 2021-10-28 |  | 2d |  |
| 121 |  | Création et gestion des devis | 3d | 2021-10-26 | 2021-10-28 |  | 2d |  |
| 122 |  | Création et gestion des modules | 2d | 2021-10-25 | 2021-10-26 |  | 4d |  |
| 123 |  | Création et gestion des composants | 2d | 2021-10-29 | 2021-11-01 |  | 0d |  |
| 124 |  | Création et gestion des gammes | 2d | 2021-10-29 | 2021-11-01 |  | 0d |  |
| 125 |  | Doc d'administration | 6d | 2021-10-15 | 2021-10-22 |  | 6d |  |
| 126 | 2.12 | **Mise en production** | 28d | 2021-11-02 | 2021-12-09 | 94 | 0d |  |
| 127 |  | Installer le système sur les tablettes | 14d | 2021-11-02 | 2021-11-19 |  | 0d |  |
| 128 | 2.12.2 | **Proposer des formations** | 14d | 2021-11-22 | 2021-12-09 | 127 | 0d |  |
| 129 |  | Aux commerciaux | 14d | 2021-11-22 | 2021-12-09 |  | 0d |  |
| 130 |  | A l'équipe BE | 2d | 2021-11-24 | 2021-11-26 |  | 9.32d |  |
| 131 |  | A l'équipe IT | 4d | 2021-11-22 | 2021-11-25 |  | 10d |  |
| 132 |  | Livrable Final (Mise en production de l'application) | 0d | 2021-09-27 | 2021-09-27 |  |  | start no earlier than 2021-09-27 |
| 133 |  | Assurer la maintenance | 262d | 2021-12-10 | 2022-12-12 | 126 | 0d |  |
| 134 |  | Fin projet | 0d | 2022-12-12 | 2022-12-12 | 133 | 0d |  |

## Version 2 (saved 2020-06-22, file Grp4-Madera-Planning-apresRef.mpp)

Note of the change: Ajout des livrables du OneDrive

Last finish stays 2022-12-12. Complete tasks 0 → 18.

Changed:

| ID | Task | Start | Finish | Duration | Complete | Total float | Other |
| --- | --- | --- | --- | --- | --- | --- | --- |
| 1 | Début projet |  |  |  |  |  | baseline start 2019-12-16 → 2019-12-12; baseline finish 2019-12-16 → 2019-12-12 |
| 2 | **Projet MADERA** | 2019-12-12 A |  |  | 0% → 8% |  | baseline start 2019-12-30 → 2019-12-12; baseline finish 2023-07-10 → 2022-12-12 |
| 3 | **Reformulation du besoin** | 2019-12-12 A | 2019-12-18 A |  | 0% → 100% | 16d → none | baseline start 2019-12-30 → 2019-12-12; baseline finish 2020-01-07 → 2019-12-18 |
| 4 | Recueillir et reformuler le besoin | 2019-12-12 A | 2019-12-14 A |  | 0% → 100% | 15d → none | baseline start 2019-12-30 → 2019-12-12; baseline finish 2019-12-31 → 2019-12-14 |
| 5 | Réaliser la "Fiche projet" | 2019-12-14 A | 2019-12-15 A |  | 0% → 100% | 18d → none | baseline start 2020-01-02 → 2019-12-14; baseline finish 2020-01-03 → 2019-12-15 |
| 6 | Réaliser le "Macro-planning" | 2019-12-14 A | 2019-12-18 A |  | 0% → 100% | 15d → none | baseline start 2020-01-06 → 2019-12-14; baseline finish 2020-01-07 → 2019-12-18 |
| 7 | Rédaction du livrable | 2019-12-14 A | 2019-12-17 A |  | 0% → 100% | 15.86d → none | baseline start none → 2019-12-14; baseline finish none → 2019-12-17 |
| 8 | GO / NO GO : Livrable 0 | 2020-01-10 A | 2020-01-10 A |  | 0% → 100% |  |  |
| 9 | **Objectifs et stratégies** | 2020-01-10 A | 2020-05-09 A |  | 0% → 100% | 0d → none | baseline start 2020-01-13 → 2020-01-10; baseline finish 2020-06-02 → 2020-05-09 |
| 10 | **Gestion du système documentaire** | 2020-01-10 A | 2020-01-14 A |  | 0% → 100% | 0d → none | baseline start 2020-01-13 → 2020-01-10; baseline finish 2020-02-12 → 2020-01-14 |
| 11 | Définir la structure de l'équipe | 2020-01-10 A | 2020-01-11 A |  | 0% → 100% | 0d → none | baseline start 2020-03-25 → 2020-01-10; baseline finish 2020-03-30 → 2020-01-11 |
| 12 | Définir un mode de stockage des documents | 2020-01-13 A | 2020-01-14 A |  | 0% → 100% | 750d → none | baseline finish 2020-01-17 → 2020-01-14 |
| 13 | Etablir la stratégie de versionning | 2020-01-10 A | 2020-01-13 A |  | 0% → 100% | 750.57d → none | baseline start 2020-01-17 → 2020-01-10; baseline finish 2020-01-23 → 2020-01-13 |
| 14 | Rédiger la configuration | 2020-01-11 A | 2020-01-12 A |  | 0% → 100% | 750d → none | baseline start 2020-01-17 → 2020-01-11; baseline finish 2020-01-27 → 2020-01-12 |
| 15 | **Analyse fonctionnelle** | 2020-01-10 A | 2020-05-04 A |  | 0% → 100% | 671.57d → none | baseline start 2020-03-02 → 2020-01-10; baseline finish 2020-05-28 → 2020-05-04 |
| 16 | Rédiger l'analyse fonctionnelle | 2020-01-10 A | 2020-01-15 → 2020-01-13 A (-2d) | 15d → 12d | 0% → 100% | 749.57d → none | baseline start 2020-03-02 → 2020-01-10; baseline finish 2020-03-04 → 2020-01-15 |
| 17 | Établir le PBS (Breakdown Structure Software) | 2020-01-10 → 2020-01-27 A (+17d) | 2020-01-13 → 2020-01-29 A (+16d) | 9.24d → 8d | 0% → 100% | 746d → none | baseline start 2020-03-04 → 2020-01-10; baseline finish 2020-03-11 → 2020-01-13 |
| 18 | Établir le WBS ((Work Breakdown Structure)) | 2020-03-11 → 2020-02-17 A (-23d) | 2020-03-13 → 2020-02-19 A (-23d) |  | 0% → 100% | 705d → none | baseline finish 2020-03-26 → 2020-03-13 |
| 19 | Déterminer les parties prenantes | 2020-03-30 A | 2020-03-31 A |  | 0% → 100% | 695.29d → none | baseline finish 2020-04-06 → 2020-03-31 |
| 20 | Établir le planning prévisionnel | 2020-04-06 A | 2020-04-10 A |  | 0% → 100% | 687.57d → none | baseline finish 2020-05-04 → 2020-04-10 |
| 21 | Définir les risques | 2020-04-30 A | 2020-05-04 A |  | 0% → 100% | 671.43d → none | baseline finish 2020-05-28 → 2020-05-04 |
| 22 | Choisir les indicateurs | 2020-04-15 A | 2020-04-16 A |  | 0% → 100% | 683.29d → none | baseline finish 2020-04-30 → 2020-04-16 |
| 23 | Rédaction du livrable | 2020-05-01 A | 2020-05-09 A |  | 0% → 100% | 666d → none | baseline finish 2020-06-02 → 2020-05-09 |
| 24 | GO / NO GO : Livrable 1 | 2020-05-29 A | 2020-05-29 A |  | 0% → 100% |  | baseline start 2020-06-26 → 2020-05-29; baseline finish 2020-06-26 → 2020-05-29 |
| 25 | **Architecture, ergonomie et traitements** |  |  |  |  |  | baseline start 2020-06-26 → 2020-05-29; baseline finish 2020-10-14 → 2020-09-25 |
| 26 | Définir le contrôle de saisies / données |  |  |  |  |  | baseline start 2020-06-26 → 2020-06-07; baseline finish 2020-07-13 → 2020-06-13 |
| 27 | Choisir la méthode de développement |  |  |  |  |  | baseline start 2020-06-26 → 2020-05-29; baseline finish 2020-07-03 → 2020-06-08 |
| 28 | **Modéliser la BDD** |  |  |  |  |  | baseline start 2020-06-26 → 2020-05-29; baseline finish 2020-08-10 → 2020-06-16 |
| 29 | UML |  |  |  |  |  | baseline start 2020-06-26 → 2020-05-29; baseline finish 2020-08-10 → 2020-06-07 |
| 30 | MERISE |  |  |  |  |  | baseline start 2020-07-15 → 2020-06-08; baseline finish 2020-07-30 → 2020-06-16 |
| 31 | **Réaliser les mockups** |  |  |  |  |  | baseline start 2020-06-26 → 2020-05-29; baseline finish 2020-07-13 → 2020-06-11 |
| 32 | Définir l'ergonomie |  |  |  |  |  | baseline start 2020-06-26 → 2020-05-29; baseline finish 2020-07-13 → 2020-06-11 |
| 33 | Définir l'interface (IHM) |  |  |  |  |  | baseline start 2020-06-26 → 2020-05-29; baseline finish 2020-07-02 → 2020-06-11 |
| 34 | **Définir l'environnement de développement** |  |  |  |  |  | baseline start 2020-08-26 → 2020-06-07; baseline finish 2020-09-09 → 2020-06-17 |
| 35 | Choisir les langages (Analyse du marché actuel) |  |  |  |  |  | baseline start 2020-08-26 → 2020-06-11; baseline finish 2020-09-02 → 2020-06-17 |
| 36 | Choix de l'hébergement (Analyse du marché actuel) |  |  |  |  |  | baseline start 2020-09-02 → 2020-06-07; baseline finish 2020-09-09 → 2020-06-10 |
| 37 | **Argumenter le choix des outils par critères, coûts et ressources** |  |  |  |  |  | baseline finish 2020-09-24 → 2020-09-13 |
| 38 | Etude des outils de développement |  |  |  |  |  | baseline finish 2020-09-24 → 2020-09-11 |
| 39 | Etude des outils de BDD |  |  |  |  |  | baseline finish 2020-09-16 → 2020-09-13 |
| 40 | Rédaction du livrable |  |  |  |  |  | baseline start 2020-09-14 → 2020-09-21; baseline finish 2020-10-14 → 2020-09-25 |
| 42 | **Prototypage** |  |  |  |  |  | baseline start 2020-10-12 → 2020-10-09; baseline finish 2021-04-15 → 2020-11-30 |
| 43 | **Établir un budget prévisionnel** |  |  |  |  |  | baseline start 2021-02-15 → 2020-10-09; baseline finish 2021-03-15 → 2020-11-09 |
| 44 | Investissement |  |  |  |  |  | baseline start 2021-02-15 → 2020-10-09; baseline finish 2021-02-22 → 2020-10-15 |
| 45 | Charges |  |  |  |  |  | baseline start 2021-02-22 → 2020-10-15; baseline finish 2021-03-01 → 2020-10-23 |
| 46 | Coûts humains |  |  |  |  |  | baseline start 2021-03-01 → 2020-10-23; baseline finish 2021-03-08 → 2020-11-03 |
| 47 | Coûts internes/externes |  |  |  |  |  | baseline start 2021-03-08 → 2020-11-03; baseline finish 2021-03-15 → 2020-11-09 |
| 48 | **Sécurisation du projet** |  |  |  |  |  | baseline start 2021-01-13 → 2020-10-27; baseline finish 2021-04-05 → 2020-11-10 |
| 49 | Plan d'assurance qualité |  |  |  |  |  | baseline start 2021-01-13 → 2020-11-07; baseline finish 2021-02-03 → 2020-11-10 |
| 50 | Gestion des risques |  |  |  |  |  | baseline start 2021-02-02 → 2020-10-27; baseline finish 2021-04-05 → 2020-11-04 |
| 51 | **Développer le prototype** |  |  |  |  |  | baseline start 2020-10-12 → 2020-10-09; baseline finish 2021-02-17 → 2020-11-23 |
| 52 | **Module "conception de devis"** |  |  |  |  |  | baseline start 2020-10-12 → 2020-10-09; baseline finish 2021-01-14 → 2020-11-15 |
| 53 | **IHM** |  |  |  |  |  | baseline start 2020-10-12 → 2020-10-11; baseline finish 2020-11-18 → 2020-11-12 |
| 54 | Interface des commerciaux |  |  |  |  |  | baseline start 2020-10-12 → 2020-10-11; baseline finish 2020-11-18 → 2020-11-12 |
| 55 | Interface de connexion |  |  |  |  |  | baseline finish 2020-10-27 → 2020-10-18 |
| 56 | **Traitements** |  |  |  |  |  | baseline start 2020-11-13 → 2020-10-09; baseline finish 2021-01-14 → 2020-11-15 |
| 57 | Authentification |  |  |  |  |  | baseline start 2020-11-13 → 2020-10-18; baseline finish 2020-11-16 → 2020-10-22 |
| 58 | **Projet** |  |  |  |  |  | baseline start 2020-11-20 → 2020-10-25; baseline finish 2020-12-07 → 2020-11-04 |
| 59 | Création |  |  |  |  |  | baseline start 2020-11-20 → 2020-10-25; baseline finish 2020-12-07 → 2020-10-27 |
| 60 | Modification |  |  |  |  |  | baseline start 2020-11-20 → 2020-10-27; baseline finish 2020-12-07 → 2020-10-31 |
| 61 | Suppression |  |  |  |  |  | baseline start 2020-11-20 → 2020-10-31; baseline finish 2020-11-24 → 2020-11-01 |
| 62 | Lecture |  |  |  |  |  | baseline start 2020-11-20 → 2020-11-01; baseline finish 2020-11-27 → 2020-11-04 |
| 63 | **Devis** |  |  |  |  |  | baseline start 2020-12-03 → 2020-10-09; baseline finish 2020-12-17 → 2020-11-15 |
| 64 | Création |  |  |  |  |  | baseline start 2020-12-03 → 2020-10-09; baseline finish 2020-12-10 → 2020-10-11 |
| 65 | Modification |  |  |  |  |  | baseline start 2020-12-03 → 2020-11-12; baseline finish 2020-12-10 → 2020-11-15 |
| 66 | Suppression |  |  |  |  |  | baseline start 2020-12-03 → 2020-10-23; baseline finish 2020-12-10 → 2020-10-24 |
| 67 | Lecture |  |  |  |  |  | baseline start 2020-12-03 → 2020-10-24; baseline finish 2020-12-10 → 2020-10-27 |
| 68 | Envoi au fournisseur |  |  |  |  |  | baseline start 2020-12-10 → 2020-10-18; baseline finish 2020-12-17 → 2020-10-21 |
| 69 | Imprimer |  |  |  |  |  | baseline start 2020-12-10 → 2020-10-21; baseline finish 2020-12-17 → 2020-10-22 |
| 70 | Fonction de lecture des modules |  |  |  |  |  | baseline start 2020-12-16 → 2020-10-22; baseline finish 2021-01-14 → 2020-10-25 |
| 71 | Fonction de lecture des composants |  |  |  |  |  | baseline start 2020-12-16 → 2020-11-04; baseline finish 2020-12-31 → 2020-11-07 |

| ID | Task | Start | Finish | Total float | Predecessors | Other |
| --- | --- | --- | --- | --- | --- | --- |
| 72 | Fonction de lecture des gammes |  |  |  |  | baseline start 2020-12-16 → 2020-10-09; baseline finish 2020-12-31 → 2020-10-12 |
| 73 | Mettre en place la base de données |  |  |  |  | baseline start 2021-01-12 → 2020-10-22; baseline finish 2021-01-27 → 2020-11-08 |
| 74 | Scénario de test |  |  |  |  | baseline start 2021-01-25 → 2020-11-15; baseline finish 2021-02-17 → 2020-11-23 |
| 75 | Rédaction du livrable |  |  |  |  | baseline start 2021-03-17 → 2020-11-23; baseline finish 2021-04-15 → 2020-11-30 |
| 76 | GO / NO GO : Livrable 3 |  |  |  |  | baseline start 2021-04-27 → 2021-04-12; baseline finish 2021-04-27 → 2021-04-12 |
| 77 | **Synthèse** |  |  |  |  | baseline start 2021-04-27 → 2021-04-12; baseline finish 2021-07-05 → 2021-05-23 |
| 78 | **Rapport final** |  |  |  |  | baseline start 2021-04-27 → 2021-04-12; baseline finish 2021-07-02 → 2021-05-06 |
| 79 | Établir le plan de management du projet |  |  |  |  | baseline start 2021-04-27 → 2021-04-12; baseline finish 2021-06-11 → 2021-04-19 |
| 80 | Justifier les choix technologiques et les stratégies retenues |  |  |  |  | baseline start 2021-04-27 → 2021-04-12; baseline finish 2021-05-20 → 2021-04-16 |
| 81 | Établir la politique de sécurisation |  |  |  |  | baseline start 2021-04-27 → 2021-04-12; baseline finish 2021-06-11 → 2021-04-16 |
| 82 | Établir le plan de sauvegarde des données |  |  |  |  | baseline start 2021-04-27 → 2021-05-02; baseline finish 2021-05-12 → 2021-05-06 |
| 83 | Établir le plan de restauration des données |  |  |  |  | baseline start 2021-04-27 → 2021-04-18; baseline finish 2021-05-12 → 2021-04-23 |
| 84 | Établir une traçabilité des données |  |  |  |  | baseline start 2021-05-24 → 2021-04-18; baseline finish 2021-06-22 → 2021-04-24 |
| 85 | Rédiger le descriptif des outils pour la maintenance |  |  |  |  | baseline start 2021-05-24 → 2021-04-21; baseline finish 2021-05-31 → 2021-04-26 |
| 86 | Établir le plan de déploiement |  |  |  |  | baseline start 2021-05-31 → 2021-04-24; baseline finish 2021-06-15 → 2021-04-28 |
| 87 | Établir le plan de gestion de changement |  |  |  |  | baseline start 2021-06-17 → 2021-04-28; baseline finish 2021-07-02 → 2021-05-03 |
| 88 | Établir le plan de communication |  |  |  |  | baseline start 2021-06-14 → 2021-04-26; baseline finish 2021-06-29 → 2021-05-01 |
| 89 | Établir le plan de formation des utilisateurs |  |  |  |  | baseline start 2021-06-14 → 2021-04-24; baseline finish 2021-06-29 → 2021-04-30 |
| 90 | Rédiger le retour d'expérience |  |  |  |  | baseline start 2021-06-14 → 2021-04-16; baseline finish 2021-06-29 → 2021-04-24 |
| 91 | Préparer la soutenance |  |  |  |  | baseline start 2021-06-22 → 2021-05-06; baseline finish 2021-07-01 → 2021-05-15 |
| 92 | Rédaction du livrable |  |  |  |  | baseline start 2021-06-04 → 2021-05-15; baseline finish 2021-07-05 → 2021-05-23 |
| 93 | GO / NO GO FINAL : Livrable 4 |  |  |  |  | baseline start 2021-07-09 → 2021-06-30; baseline finish 2021-07-09 → 2021-06-30 |
| 94 | **Développement** |  |  |  |  | baseline start 2021-07-09 → 2021-06-30; baseline finish 2022-04-19 → 2021-11-01 |
| 95 | **Développer l'applicatif** |  |  |  |  | baseline start 2021-07-27 → 2021-06-30; baseline finish 2022-01-10 → 2021-08-26 |
| 96 | Consolider l'interface des commerciaux |  |  |  |  | baseline start 2021-07-27 → 2021-07-19; baseline finish 2021-09-23 → 2021-08-09 |
| 97 | Développer l'interface du BE |  |  |  |  | baseline start 2021-09-16 → 2021-06-30; baseline finish 2021-11-18 → 2021-07-20 |
| 98 | Développer l'interface d'administration |  |  |  |  | baseline start 2021-11-11 → 2021-08-04; baseline finish 2022-01-10 → 2021-08-26 |
| 99 | GO/ NO GO Réunion de validation du développement |  |  |  |  | baseline start none → 2021-08-26; baseline finish none → 2021-08-26 |
| 100 | **Consolider la BDD** |  |  |  |  | baseline start 2021-07-09 → 2021-08-23; baseline finish 2021-07-27 → 2021-09-15 |
| 101 | Utilisateurs |  |  |  |  | baseline start 2021-07-09 → 2021-08-23; baseline finish 2021-07-14 → 2021-08-30 |
| 102 | Client |  |  |  |  | baseline start 2021-07-09 → 2021-08-25; baseline finish 2021-07-14 → 2021-09-01 |
| 103 | Fournisseur |  |  |  |  | baseline start 2021-07-09 → 2021-08-27; baseline finish 2021-07-14 → 2021-09-03 |
| 104 | Projet |  |  |  |  | baseline start 2021-07-14 → 2021-08-31; baseline finish 2021-07-19 → 2021-09-07 |
| 105 | Composants |  |  |  |  | baseline start 2021-07-16 → 2021-09-02; baseline finish 2021-07-21 → 2021-09-09 |
| 106 | Modules |  |  |  |  | baseline start 2021-07-21 → 2021-09-06; baseline finish 2021-07-26 → 2021-09-13 |
| 107 | Gammes |  |  |  |  | baseline start 2021-07-23 → 2021-09-08; baseline finish 2021-07-27 → 2021-09-15 |
| 108 | **Réaliser des scénarios de test** |  |  |  |  | baseline start 2022-01-03 → 2021-09-16; baseline finish 2022-02-14 → 2021-10-11 |
| 109 | Réaliser les tests |  |  |  |  | baseline start 2022-01-03 → 2021-09-16; baseline finish 2022-01-18 → 2021-09-24 |
| 110 | Corriger les bugs relevés |  |  |  |  | baseline start 2022-01-17 → 2021-09-27; baseline finish 2022-02-02 → 2021-10-05 |
| 111 | Rejouer les tests |  |  |  |  | baseline start 2022-02-01 → 2021-10-06; baseline finish 2022-02-14 → 2021-10-11 |
| 112 | **Rédiger la documentation technique** |  |  |  |  | baseline start 2022-02-11 → 2021-09-10; baseline finish 2022-03-25 → 2021-10-26 |
| 113 | Processus (Algorithme...) |  |  |  |  | baseline start 2022-02-11 → 2021-10-12; baseline finish 2022-02-28 → 2021-10-20 |
| 114 | Doc de maintenance |  |  |  |  | baseline start 2022-02-25 → 2021-10-12; baseline finish 2022-03-07 → 2021-10-20 |
| 115 | Mise à jour de la documentation UML |  |  |  |  | baseline start 2022-03-07 → 2021-09-10; baseline finish 2022-03-15 → 2021-10-14 |
| 116 | Nomenclature |  |  |  |  | baseline start 2022-03-15 → 2021-10-21; baseline finish 2022-03-21 → 2021-10-26 |
| 117 | Glossaire |  |  |  |  | baseline start 2022-03-21 → 2021-10-21; baseline finish 2022-03-25 → 2021-10-25 |
| 118 | GO / NO GO Réunion de validation du projet |  |  |  |  | baseline start none → 2021-10-11; baseline finish none → 2021-10-11 |
| 119 | **Rédiger les manuels d'utilisation** |  |  |  |  | baseline start 2022-03-25 → 2021-10-15; baseline finish 2022-04-19 → 2021-11-01 |
| 120 | Introduction à l'application |  |  |  |  | baseline start 2022-03-25 → 2021-10-27; baseline finish 2022-03-29 → 2021-10-28 |
| 121 | Création et gestion des devis |  |  |  |  | baseline start 2022-03-29 → 2021-10-26; baseline finish 2022-04-04 → 2021-10-28 |
| 122 | Création et gestion des modules |  |  |  |  | baseline start 2022-04-04 → 2021-10-25; baseline finish 2022-04-07 → 2021-10-26 |
| 123 | Création et gestion des composants |  |  |  |  | baseline start 2022-04-07 → 2021-10-29; baseline finish 2022-04-11 → 2021-11-01 |
| 124 | Création et gestion des gammes |  |  |  |  | baseline start 2022-04-11 → 2021-10-29; baseline finish 2022-04-15 → 2021-11-01 |
| 125 | Doc d'administration |  |  |  |  | baseline start 2022-04-15 → 2021-10-15; baseline finish 2022-04-19 → 2021-10-22 |
| 126 | **Mise en production** |  |  | 0d → none |  | baseline start 2022-04-19 → 2021-11-02; baseline finish 2022-05-16 → 2021-12-09 |
| 127 | Installer le système sur les tablettes |  |  |  |  | baseline start 2022-04-19 → 2021-11-02; baseline finish 2022-04-28 → 2021-11-19 |
| 128 | **Proposer des formations** |  |  |  |  | baseline start 2022-04-28 → 2021-11-22; baseline finish 2022-05-16 → 2021-12-09 |
| 129 | Aux commerciaux |  |  |  |  | baseline start 2022-04-28 → 2021-11-22; baseline finish 2022-05-09 → 2021-12-09 |
| 130 | A l'équipe BE |  |  |  |  | baseline start 2022-05-06 → 2021-11-24; baseline finish 2022-05-10 → 2021-11-26 |
| 131 | A l'équipe IT |  |  |  |  | baseline start 2022-05-10 → 2021-11-22; baseline finish 2022-05-16 → 2021-11-25 |
| 132 | Livrable Final (Mise en production de l'application) | 2021-09-27 → 2021-12-10 (+74d) | 2021-09-27 → 2021-12-10 (+74d) |  | none → 126 | baseline start none → 2021-09-27; baseline finish none → 2021-09-27 |
| 133 | Assurer la maintenance |  |  |  |  | baseline start 2022-05-16 → 2021-12-10; baseline finish 2023-07-10 → 2022-12-12 |
| 134 | Fin projet |  |  |  |  | baseline start 2023-07-10 → 2022-12-12; baseline finish 2023-07-10 → 2022-12-12 |
